# Project_9

Schedule from MS Project, 2024-03-04 to 2024-07-10, status date 2024-06-30, 5 hours a day, A marks actual dates.

## Calendars

- Standard: Mon-Fri 08:00-12:00, 13:00-17:00; Sat-Sun off. Exceptions (off unless hours are given): 2024-03-29 (Sexta-Feira Santa), 2024-04-25 (Dia da Liberdade), 2024-05-01 (Dia do Trabalhador), 2024-05-30 (Corpo de Deus), 2024-06-10 (Dia de Portugal), 2024-06-13 (Dia de Lisboa).

## Resources

| Resource |
| --- |
| Miguel Fernandes |
| Pedro Brito |
| Edgar Casimiro |
| Tiago Mateus |
| Portátil/Dispositivo Móvel |
| Python |
| Google ML Kit |
| TFLite (TensorFlow Lite): |
| FaceNet |
| Firebase |
| Flutter |
| Server |
| Bibliotecas Neurais |
| Outros |

## Schedule

| ID | WBS | Task | Type | Duration | Start | Finish | Predecessors | Complete | Remaining | Actual finish | Baseline start | Baseline finish | Baseline duration | Total slack | Constraint | Resources | Work | Actual work | comment |
| --- | --- | --- | --- | --- | --- | --- | --- | --- | --- | --- | --- | --- | --- | --- | --- | --- | --- | --- | --- |
| 1 | 1 | **Sistema Anti DEEPFAKE** |  | 140.5d | 2024-03-04 A | 2024-07-10 |  | 99% | 1.17d |  | 2024-03-04 | 2024-07-10 | 140.5d |  |  |  | 5074.2h | 4988.2h |  |
| 2 | 1.1 | **Reuniões** |  | 139.2d | 2024-03-04 A | 2024-07-10 |  | 99% | 1.4d |  | 2024-03-04 | 2024-07-10 | 139.2d |  |  |  | 3952h | 3888h |  |
| 3 | 1.1.1 | Reunião inicio de projecto |  | 8d | 2024-03-04 A | 2024-03-08 A |  | 100% |  |  | 2024-03-04 | 2024-03-08 | 8d |  |  | Miguel Fernandes; Pedro Brito; Edgar Casimiro; Tiago Mateus | 160h | 160h |  |
| 4 | 1.1.2 | Reunião de aceitação de projeto |  | 8d | 2024-03-11 A | 2024-03-15 A | 3 | 100% |  |  | 2024-03-11 | 2024-03-15 | 8d |  |  | Miguel Fernandes; Pedro Brito; Edgar Casimiro; Tiago Mateus | 160h | 160h | Ficha de registo |
| 5 | 1.1.3 | Reunião de apresentação do projeto |  | 1.6d | 2024-07-04 | 2024-07-04 | 64FS-1.6d |  |  |  | 2024-07-10 | 2024-07-10 | 1.6d | 6.4d |  | Miguel Fernandes; Pedro Brito; Edgar Casimiro; Tiago Mateus | 32h |  | Precedência com apresentação de Projeto no fim |
| 6 | 1.1.4 | Reunião de discussão do balanço do projeto | manual | 1.6d | 2024-05-09 A | 2024-05-09 A |  | 100% |  |  | 2024-05-09 | 2024-05-09 | 1.6d |  |  | Miguel Fernandes; Pedro Brito; Edgar Casimiro; Tiago Mateus | 32h | 32h |  |
| 7 | 1.1.5 | Reunião de entrega de relatório |  | 1.6d | 2024-07-01 A | 2024-07-01 A | 63FS-1.6d | 100% |  |  | 2024-06-27 | 2024-06-27 | 1.6d |  |  | Miguel Fernandes; Pedro Brito; Edgar Casimiro; Tiago Mateus | 32h | 32h |  |
| 8 | 1.1.6 | Apresentação do Sistema |  | 1.6d | 2024-07-04 | 2024-07-04 | 64FS-1.6d |  |  |  | 2024-07-10 | 2024-07-10 | 1.6d | 6.4d |  | Miguel Fernandes; Pedro Brito; Edgar Casimiro; Tiago Mateus | 32h |  |  |
| 9 | 1.1.7 | **Documentação** |  | 108.8d | 2024-03-18 A | 2024-06-27 A | 4FS+3.2d | 100% |  |  | 2024-03-18 | 2024-06-27 | 108.8d |  |  |  | 3504h | 3504h |  |
| 10 | 1.1.7.1 | **Relatório de projeto** |  | 108.8d | 2024-03-18 A | 2024-06-27 A | 4FS+3.2d | 100% |  |  | 2024-03-18 | 2024-06-27 | 108.8d |  |  |  | 2352h | 2352h |  |
| 11 | 1.1.7.1.1 | Introdução | manual | 27.2d | 2024-03-18 A | 2024-04-10 A |  | 100% |  |  | 2024-03-18 | 2024-04-10 | 27.2d |  | finish no earlier than 2024-04-10 | Miguel Fernandes; Pedro Brito | 272h | 272h |  |
| 12 | 1.1.7.1.2 | Fundamentação Teórica | manual | 27.2d | 2024-03-18 A | 2024-04-10 A |  | 100% |  |  | 2024-03-18 | 2024-04-10 | 27.2d |  |  | Miguel Fernandes; Pedro Brito | 272h | 272h |  |
| 13 | 1.1.7.1.3 | Descrição e Funções | manual | 24d | 2024-04-11 A | 2024-05-03 A | 12 | 100% |  |  | 2024-04-11 | 2024-05-03 | 24d |  |  | Miguel Fernandes; Pedro Brito | 240h | 240h |  |
| 14 | 1.1.7.1.4 | Metodologia | manual | 24d | 2024-04-11 A | 2024-05-03 A | 12 | 100% |  |  | 2024-04-11 | 2024-05-03 | 24d |  |  | Edgar Casimiro; Tiago Mateus | 240h | 240h |  |
| 15 | 1.1.7.1.5 | Funcionalidades e prototipo | manual | 24d | 2024-05-06 A | 2024-05-24 A | 14 | 100% |  |  | 2024-05-06 | 2024-05-24 | 24d |  |  | Edgar Casimiro; Tiago Mateus | 240h | 240h |  |
| 16 | 1.1.7.1.6 | Resultados e discussões | manual | 24d | 2024-05-27 A | 2024-06-19 A | 15 | 100% |  |  | 2024-05-27 | 2024-06-19 | 24d |  |  | Miguel Fernandes; Pedro Brito; Edgar Casimiro; Tiago Mateus | 480h | 480h |  |
| 17 | 1.1.7.1.7 | Considerações Finais | manual | 9.6d | 2024-06-20 A | 2024-06-27 A | 16 | 100% |  |  | 2024-06-20 | 2024-06-27 | 9.6d |  |  | Miguel Fernandes; Pedro Brito; Edgar Casimiro; Tiago Mateus | 192h | 192h |  |
| 18 | 1.1.7.1.8 | Conclusões | manual | 20.8d | 2024-05-18 A | 2024-06-05 A |  | 100% |  |  | 2024-05-18 | 2024-06-05 | 20.8d |  |  | Miguel Fernandes; Pedro Brito; Edgar Casimiro; Tiago Mateus | 416h | 416h |  |
| 19 | 1.1.7.2 | Manual de utilização de sistema | manual | 54.4d | 2024-04-04 A | 2024-05-23 A |  | 100% |  |  | 2024-04-04 | 2024-05-23 | 54.4d |  |  | Miguel Fernandes; Pedro Brito | 544h | 544h |  |
| 20 | 1.1.7.3 | Manual de especificações | manual | 60.8d | 2024-04-04 A | 2024-05-29 A |  | 100% |  |  | 2024-04-04 | 2024-05-29 | 60.8d |  |  | Edgar Casimiro; Tiago Mateus | 608h | 608h |  |
| 21 | 1.2 | **Arquitetura do Sistema** |  | 88d | 2024-03-18 A | 2024-06-06 |  | 100% |  | 2024-06-05 | 2024-03-18 | 2024-06-06 | 88d |  |  |  | 475.2h | 475.2h |  |
| 22 | 1.2.1 | **Módulo 1 - Reconhecimento facial** |  | 46.4d | 2024-03-18 A | 2024-04-29 A |  | 100% |  |  | 2024-03-18 | 2024-04-29 | 46.4d |  |  |  | 331.2h | 331.2h |  |
| 23 | 1.2.1.1 | Deteção e localização facial | manual | 20.8d | 2024-03-18 A | 2024-04-04 A |  | 100% |  |  | 2024-03-18 | 2024-04-04 | 20.8d |  | finish no earlier than 2024-04-04 | FaceNet; Tiago Mateus; Edgar Casimiro | 187.2h | 187.2h |  |
| 24 | 1.2.1.2 | **Extração de características faciais** |  | 11.2d | 2024-04-05 A | 2024-04-15 A |  | 100% |  |  | 2024-04-05 | 2024-04-15 | 11.2d |  |  |  | 112h | 112h |  |
| 25 | 1.2.1.2.1 | Prova de Vida | manual | 4.8d | 2024-04-05 A | 2024-04-09 A | 23 | 100% |  |  | 2024-04-05 | 2024-04-09 | 4.8d |  |  | Google ML Kit; Edgar Casimiro | 24h | 24h |  |
| 26 | 1.2.1.2.2 | Deteção do fechar de olhos | manual | 4.8d | 2024-04-05 A | 2024-04-09 A | 23 | 100% |  |  | 2024-04-05 | 2024-04-09 | 4.8d |  |  | Google ML Kit; Edgar Casimiro | 24h | 24h |  |
| 27 | 1.2.1.2.3 | Pre testes | manual | 3.2d | 2024-04-12 A | 2024-04-15 A | 25, 26 | 100% |  |  | 2024-04-12 | 2024-04-15 | 3.2d |  |  | Miguel Fernandes; Pedro Brito; Edgar Casimiro; Tiago Mateus | 64h | 64h |  |
| 28 | 1.2.1.3 | Reconhecimento facial com redes neuronais convolucionais | manual | 14.4d | 2024-04-15 A | 2024-04-26 A |  | 100% |  |  | 2024-04-15 | 2024-04-26 | 14.4d |  |  | Bibliotecas Neurais |  |  |  |
| 29 | 1.2.1.4 | Pre testes | manual | 1.6d | 2024-04-29 A | 2024-04-29 A | 24 | 100% |  |  | 2024-04-29 | 2024-04-29 | 1.6d |  |  | Miguel Fernandes; Pedro Brito; Edgar Casimiro; Tiago Mateus | 32h | 32h |  |

| ID | WBS | Task | Type | Duration | Start | Finish | Predecessors | Complete | Actual finish | Baseline start | Baseline finish | Baseline duration | Constraint | Resources | Work | Actual work |
| --- | --- | --- | --- | --- | --- | --- | --- | --- | --- | --- | --- | --- | --- | --- | --- | --- |
| 30 | 1.2.2 | **Módulo 2 - Reconhecimento voz** |  | 32d | 2024-04-26 A | 2024-05-24 A |  | 100% |  | 2024-04-26 | 2024-05-24 | 32d |  |  | 80h | 80h |
| 31 | 1.2.2.1 | Captura de voz | manual | 8d | 2024-04-26 A | 2024-05-03 A |  | 100% |  | 2024-04-26 | 2024-05-03 | 8d |  | TFLite (TensorFlow Lite):; Tiago Mateus |  |  |
| 32 | 1.2.2.2 | **Pré-processamento do sinal de voz** |  | 8d | 2024-05-06 A | 2024-05-10 A |  | 100% |  | 2024-05-06 | 2024-05-10 | 8d |  |  | 16h | 16h |
| 33 | 1.2.2.2.1 | Extração de características vocais | manual | 8d | 2024-05-06 A | 2024-05-10 A | 31 | 100% |  | 2024-05-06 | 2024-05-10 | 8d |  | TFLite (TensorFlow Lite):; Tiago Mateus | 16h | 16h |
| 34 | 1.2.2.3 | Classificação de voz com redes neurais convolucionais | manual | 9.6d | 2024-05-13 A | 2024-05-20 A | 33 | 100% |  | 2024-05-13 | 2024-05-20 | 9.6d |  | Bibliotecas Neurais |  |  |
| 35 | 1.2.2.4 | Pre testes |  | 3.2d | 2024-05-23 A | 2024-05-24 A | 31, 33 | 100% |  | 2024-05-23 | 2024-05-24 | 3.2d | start no earlier than 2024-05-23 | Miguel Fernandes; Pedro Brito; Edgar Casimiro; Tiago Mateus | 64h | 64h |
| 36 | 1.2.3 | **Módulo de fusão de decisões - Modulos 1, 2** |  | 9.6d | 2024-05-30 A | 2024-06-06 |  | 100% | 2024-06-05 | 2024-05-30 | 2024-06-06 | 9.6d |  |  | 64h | 64h |
| 37 | 1.2.3.1 | Técnicas de fusão de autenticação | manual | 3.2d | 2024-05-30 A | 2024-05-31 A |  | 100% |  | 2024-05-30 | 2024-05-31 | 3.2d |  | Outros; Tiago Mateus | 16h | 16h |
| 38 | 1.2.3.2 | Autenticação Integrada (facial e voz) | manual | 3.2d | 2024-06-03 A | 2024-06-04 A | 37 | 100% |  | 2024-06-03 | 2024-06-04 | 3.2d |  | Outros; Tiago Mateus | 16h | 16h |
| 39 | 1.2.3.3 | Pre testes | manual | 1.6d | 2024-06-05 A | 2024-06-05 A | 37, 38 | 100% |  | 2024-06-05 | 2024-06-05 | 1.6d |  | Miguel Fernandes; Pedro Brito; Edgar Casimiro; Tiago Mateus | 32h | 32h |
| 40 | 1.3 | **Implementação do Sistema e Componentes** |  | 65.6d | 2024-03-25 A | 2024-05-23 A |  | 100% |  | 2024-03-25 | 2024-05-23 | 65.6d |  |  | 192h | 192h |
| 41 | 1.3.1 | **Base de dados** |  | 14.4d | 2024-03-25 A | 2024-04-05 A |  | 100% |  | 2024-03-25 | 2024-04-05 | 14.4d |  |  | 64h | 64h |
| 42 | 1.3.1.1 | Requisitos de armazenamento de dados | manual | 11.2d | 2024-03-25 A | 2024-04-03 A |  | 100% |  | 2024-03-25 | 2024-04-03 | 11.2d |  | Firebase |  |  |
| 43 | 1.3.1.2 | Pre testes | manual | 3.2d | 2024-04-04 A | 2024-04-05 A | 42 | 100% |  | 2024-04-04 | 2024-04-05 | 3.2d |  | Miguel Fernandes; Pedro Brito; Edgar Casimiro; Tiago Mateus | 64h | 64h |
| 44 | 1.3.2 | **Desenvolvimento Back-end** |  | 20.8d | 2024-03-25 A | 2024-04-11 A |  | 100% |  | 2024-03-25 | 2024-04-11 | 20.8d |  |  | 64h | 64h |
| 45 | 1.3.2.1 | Requisitos de interface externa | manual | 11.2d | 2024-03-25 A | 2024-04-03 A |  | 100% |  | 2024-03-25 | 2024-04-03 | 11.2d |  | Python |  |  |
| 46 | 1.3.2.2 | Atributos do Aplicativo | manual | 6.4d | 2024-04-04 A | 2024-04-09 A | 45 | 100% |  | 2024-04-04 | 2024-04-09 | 6.4d |  | Python |  |  |
| 47 | 1.3.2.3 | Pre testes | manual | 3.2d | 2024-04-10 A | 2024-04-11 A | 46 | 100% |  | 2024-04-10 | 2024-04-11 | 3.2d |  | Miguel Fernandes; Pedro Brito; Edgar Casimiro; Tiago Mateus | 64h | 64h |
| 48 | 1.3.3 | **Desenvolvimento Front-end** |  | 20.8d | 2024-04-12 A | 2024-05-02 A |  | 100% |  | 2024-04-12 | 2024-05-02 | 20.8d |  |  | 64h | 64h |
| 49 | 1.3.3.1 | Requisitos de interface externa | manual | 11.2d | 2024-04-12 A | 2024-04-22 A | 44 | 100% |  | 2024-04-12 | 2024-04-22 | 11.2d |  | Flutter |  |  |
| 50 | 1.3.3.2 | Atributos do Aplicativo | manual | 4.8d | 2024-04-23 A | 2024-04-26 A | 49 | 100% |  | 2024-04-23 | 2024-04-26 | 4.8d |  | Flutter |  |  |
| 51 | 1.3.3.3 | Pre testes | manual | 3.2d | 2024-04-30 A | 2024-05-02 A | 50 | 100% |  | 2024-04-30 | 2024-05-02 | 3.2d |  | Miguel Fernandes; Pedro Brito; Edgar Casimiro; Tiago Mateus | 64h | 64h |
| 52 | 1.3.4 | **Requisitos do Sistema** |  | 24d | 2024-05-03 A | 2024-05-23 A |  | 100% |  | 2024-05-03 | 2024-05-23 | 24d |  |  |  |  |
| 53 | 1.3.4.1 | Requisitos funcionais | manual | 8d | 2024-05-03 A | 2024-05-09 A | 51 | 100% |  | 2024-05-03 | 2024-05-09 | 8d |  | Server |  |  |
| 54 | 1.3.4.2 | Características do ambiente do sistema | manual | 8d | 2024-05-10 A | 2024-05-16 A | 53 | 100% |  | 2024-05-10 | 2024-05-16 | 8d |  | Server |  |  |
| 55 | 1.3.4.3 | Componentes do sistema | manual | 8d | 2024-05-17 A | 2024-05-23 A | 54 | 100% |  | 2024-05-17 | 2024-05-23 | 8d |  | Server |  |  |

| ID | WBS | Task | Type | Duration | Start | Finish | Predecessors | Complete | Baseline start | Baseline finish | Baseline duration | Resources | Work | Actual work |
| --- | --- | --- | --- | --- | --- | --- | --- | --- | --- | --- | --- | --- | --- | --- |
| 56 | 1.4 | **Testes de Aceitação** |  | 14.4d | 2024-06-07 A | 2024-06-21 A |  | 100% | 2024-06-07 | 2024-06-26 | 19.2d |  | 192h | 192h |
| 57 | 1.4.1 | Teste e avaliação do reconhecimento facial | manual | 3.2d | 2024-06-07 A | 2024-06-11 A | 21 | 100% | 2024-06-07 | 2024-06-11 | 3.2d | Miguel Fernandes; Pedro Brito; Edgar Casimiro; Tiago Mateus | 64h | 64h |
| 58 | 1.4.2 | Teste e avaliação da biometria de voz | manual | 3.2d | 2024-06-18 A | 2024-06-19 A | 57 | 100% | 2024-06-18 | 2024-06-19 | 3.2d | Miguel Fernandes; Pedro Brito; Edgar Casimiro; Tiago Mateus | 64h | 64h |
| 59 | 1.4.3 | Teste e Avaliação da Autenticação Integrada anti Deepfake | manual | 3.2d | 2024-06-20 A | 2024-06-21 A | 58 | 100% | 2024-06-25 | 2024-06-26 | 3.2d | Miguel Fernandes; Pedro Brito; Edgar Casimiro; Tiago Mateus | 64h | 64h |
| 60 | 1.5 | **Entrega do Projeto** |  | 22.1d | 2024-06-12 A | 2024-07-01 A |  | 100% | 2024-06-12 | 2024-06-27 | 17.6d |  | 241h | 241h |
| 61 | 1.5.1 | Revisão da documentação | manual | 14.4d | 2024-06-12 A | 2024-06-25 A | 57 | 100% | 2024-06-12 | 2024-06-25 | 14.4d | Miguel Fernandes [90%]; Pedro Brito [90%]; Edgar Casimiro [10%]; Tiago Mateus [10%] | 144h | 144h |
| 62 | 1.5.2 | Video de Apresentação | manual | 3d | 2024-06-24 A | 2024-06-26 A | 59 | 100% |  |  |  | Edgar Casimiro [70%]; Miguel Fernandes [10%]; Pedro Brito [10%]; Tiago Mateus [10%] | 15h | 15h |
| 63 | 1.5.3 | Submissão | manual | 4.1d | 2024-06-30 A | 2024-07-01 A | 61 | 100% | 2024-06-26 | 2024-06-27 | 3.2d | Miguel Fernandes; Pedro Brito; Edgar Casimiro; Tiago Mateus | 82h | 82h |
| 64 | 1.6 | Apresentação | manual | 1.1d | 2024-07-04 | 2024-07-04 |  |  | 2024-07-10 | 2024-07-10 | 1.6d | Miguel Fernandes; Pedro Brito; Edgar Casimiro; Tiago Mateus | 22h |  |
